# 3-策划和执行营销事件

Schedule from MS Project, 2018-01-29 to 2018-04-12.

## Calendars

- 标准: Mon-Fri 08:00-12:00, 13:00-17:00; Sat-Sun off.

## Resources

| Resource |
| --- |
| 后勤领导组 |
| 营销领导组 |
| 赞助商 |
| 销售人员 |
| 贸易展览人员 |
| 创意人员 |
| 内容顾问 |
| 营销人员 |
| 营销研究人员 |
| 打印机 |
| Web 内容编辑/创意人员 |
| 营销代表 |
| CMO |
| 供应商 |
| 内部公关人员 |
| 内部销售人员 |
| 合同管理人员 |
| 事件领导组 |
| 事件工作组 |
| 事件工作人员 |
| 后勤人员 |
| 网络广播制作人员 |
| 营销数据 |
| 营销交流 |
| 人员 |

## Schedule

| ID | WBS | Task | Type | Duration | Start | Finish | Predecessors | Total slack | Free slack | Resources | Work |
| --- | --- | --- | --- | --- | --- | --- | --- | --- | --- | --- | --- |
| 1 | 1 | **策划和执行营销事件** |  | 53.1d? | 2018-01-29 08:00 | 2018-04-12 08:48 |  | 0d |  |  | 1008.8h |
| 2 | 1.1 | **确定和策划事件** |  | 9d? | 2018-01-29 08:00 | 2018-02-08 17:00 |  | 0d |  |  | 144h |
| 3 | 1.1.1 | 选择事件类型 |  | 1d? | 2018-01-29 08:00 | 2018-01-29 17:00 |  | 44.1d | 0d | 营销领导组; 事件领导组 | 16h |
| 4 | 1.1.2 | 确定目标听众 |  | 0.5d? | 2018-01-30 08:00 | 2018-01-30 12:00 | 3 | 44.1d | 0d | 营销领导组; 事件领导组 | 8h |
| 5 | 1.1.3 | 确定需求生成过程 |  | 2d? | 2018-01-30 13:00 | 2018-02-01 12:00 | 4 | 44.1d | 0d | 事件领导组 | 16h |
| 6 | 1.1.4 | 确定事件目标 |  | 1d? | 2018-01-30 13:00 | 2018-01-31 12:00 | 4 | 1d |  | 营销领导组; 事件领导组 | 16h |
| 7 | 1.1.5 | 陈述总体事件主题 |  | 3d? | 2018-02-01 13:00 | 2018-02-06 12:00 | 5, 6 | 44.1d | 0d | 营销领导组; 事件领导组 | 48h |
| 8 | 1.1.6 | 确定初步事件日期和时间 |  | 0.5d? | 2018-02-06 13:00 | 2018-02-06 17:00 | 7 | 44.1d | 0d | 营销领导组; 事件领导组 | 8h |
| 9 | 1.1.7 | 确定事件工作组 |  | 0.5d? | 2018-02-07 08:00 | 2018-02-07 12:00 | 8 | 44.1d | 0d | 营销领导组; 事件领导组 | 8h |
| 10 | 1.1.8 | 制定事件日程 |  | 0.5d? | 2018-02-07 13:00 | 2018-02-07 17:00 | 9 | 44.1d | 0d | 事件领导组 | 4h |
| 11 | 1.1.9 | 确定交流过程和机制 |  | 1d? | 2018-02-08 08:00 | 2018-02-08 17:00 | 10 | 44.1d |  | 事件领导组 | 8h |
| 12 | 1.1.10 | 创建事件反馈机制 |  | 1d? | 2018-01-29 08:00 | 2018-01-29 17:00 |  | 0d |  | 事件领导组 | 8h |
| 13 | 1.1.11 | 确定事件预算 |  | 0.5d? | 2018-01-30 08:00 | 2018-01-30 12:00 | 12 | 0d |  | 事件领导组 | 4h |
| 14 | 1.1.12 | 完成事件策划 | milestone | 0d | 2018-01-30 12:00 | 2018-01-30 12:00 | 13 | 0d |  |  |  |
| 15 | 1.2 | **选择演讲者** |  | 9d? | 2018-01-30 13:00 | 2018-02-12 12:00 |  | 0d |  |  | 72h |
| 16 | 1.2.1 | 选择陈述主题 |  | 0.5d? | 2018-01-30 13:00 | 2018-01-30 17:00 | 14 | 0d |  | 事件工作组 | 4h |
| 17 | 1.2.2 | 确定演讲者 |  | 3d? | 2018-01-31 08:00 | 2018-02-02 17:00 | 16 | 0d |  | 事件工作组 | 24h |
| 18 | 1.2.3 | 获取演讲者信息 |  | 1d? | 2018-02-05 08:00 | 2018-02-05 17:00 | 17 | 0d |  | 事件工作组 | 8h |
| 19 | 1.2.4 | 确认演讲者和详细信息 |  | 0.5d? | 2018-02-06 08:00 | 2018-02-06 12:00 | 18 | 0d |  | 事件工作组 | 4h |
| 20 | 1.2.5 | 开发脚本 |  | 2d? | 2018-02-06 13:00 | 2018-02-08 12:00 | 19 | 0d |  | 事件工作组 | 16h |
| 21 | 1.2.6 | 发送公共交通和事件详细信息 |  | 0.5d? | 2018-02-08 13:00 | 2018-02-08 17:00 | 20 | 0d |  | 事件工作组 | 4h |
| 22 | 1.2.7 | 确认演讲者到达时间 |  | 0.5d? | 2018-02-09 08:00 | 2018-02-09 12:00 | 21 | 0d |  | 事件工作组 | 4h |
| 23 | 1.2.8 | 安排演讲者报酬 |  | 0.5d? | 2018-02-09 13:00 | 2018-02-09 17:00 | 22 | 0d |  | 事件工作组 | 4h |
| 24 | 1.2.9 | 获得演讲者的酬谢礼物 |  | 0.5d? | 2018-02-12 08:00 | 2018-02-12 12:00 | 23 | 0d |  | 事件工作组 | 4h |
| 25 | 1.2.10 | 完成演讲者选择 | milestone | 0d | 2018-02-12 12:00 | 2018-02-12 12:00 | 24 | 0d |  |  |  |

Notes:
- 1: 此模板概括了在开始计划营销事件之前应考虑的主要类别。成功的事件是规划、了解听众和关注细节的组合。使用此模板可帮助您在计划阶段，理清关键事件元素。

| ID | WBS | Task | Type | Duration | Start | Finish | Predecessors | Total slack | Free slack | Resources | Work |
| --- | --- | --- | --- | --- | --- | --- | --- | --- | --- | --- | --- |
| 26 | 1.3 | **选择地点** |  | 7.5d? | 2018-01-30 13:00 | 2018-02-08 17:00 |  | 1.5d |  |  | 76h |
| 27 | 1.3.1 | 访问位置 |  | 1d? | 2018-01-30 13:00 | 2018-01-31 12:00 | 14 | 2.5d | 1d | 事件领导组 | 8h |
| 28 | 1.3.2 | 审阅目标听众和预测的出席人员 |  | 2d? | 2018-01-30 13:00 | 2018-02-01 12:00 | 14 | 1.5d | 0d | 事件工作组 | 16h |
| 29 | 1.3.3 | 选择事件位置 |  | 1d? | 2018-02-01 13:00 | 2018-02-02 12:00 | 27, 28 | 1.5d | 0d | 事件工作组 | 8h |
| 30 | 1.3.4 | 签署地点合同 |  | 2d? | 2018-02-02 13:00 | 2018-02-06 12:00 | 29 | 1.5d | 0d | 合同管理人员 | 16h |
| 31 | 1.3.5 | 进行现场排练 |  | 1d? | 2018-02-06 13:00 | 2018-02-07 12:00 | 30 | 1.5d | 0d | 事件领导组 | 8h |
| 32 | 1.3.6 | 确认详细信息 |  | 1d? | 2018-02-07 13:00 | 2018-02-08 12:00 | 31 | 1.5d | 0d | 合同管理人员; 事件领导组 | 16h |
| 33 | 1.3.7 | 后续工作 |  | 0.5d? | 2018-02-08 13:00 | 2018-02-08 17:00 | 32 | 1.5d | 0d | 事件领导组 | 4h |
| 34 | 1.3.8 | 完成地点选择 | milestone | 0d | 2018-02-08 17:00 | 2018-02-08 17:00 | 33 | 1.5d | 0d |  |  |
| 35 | 1.4 | **选择和管理饮食招待** |  | 9d? | 2018-02-09 08:00 | 2018-02-21 17:00 |  | 35.1d |  |  | 72h |
| 36 | 1.4.1 | 选择食品选项 |  | 2d? | 2018-02-09 08:00 | 2018-02-12 17:00 | 34 | 35.1d | 0d | 事件工作组 | 16h |
| 37 | 1.4.2 | 获取饮食招待报价 |  | 2d? | 2018-02-13 08:00 | 2018-02-14 17:00 | 36 | 35.1d | 0d | 事件工作组 | 16h |
| 38 | 1.4.3 | 修改菜单项 |  | 1d? | 2018-02-15 08:00 | 2018-02-15 17:00 | 37 | 35.1d | 0d | 事件工作组 | 8h |
| 39 | 1.4.4 | 安排食品口味(如果需要) |  | 1d? | 2018-02-16 08:00 | 2018-02-16 17:00 | 36, 38 | 35.1d | 0d | 事件领导组 | 8h |
| 40 | 1.4.5 | 签署饮食招待合同 |  | 0.5d? | 2018-02-19 08:00 | 2018-02-19 12:00 | 39 | 35.1d | 0d | 合同管理人员 | 4h |
| 41 | 1.4.6 | 确认详细信息 |  | 0.5d? | 2018-02-19 13:00 | 2018-02-19 17:00 | 40 | 35.1d | 0d | 事件工作组 | 4h |
| 42 | 1.4.7 | 进行事件日到达、布置、事件管理、拆卸 |  | 1d? | 2018-02-20 08:00 | 2018-02-20 17:00 | 41 | 35.1d | 0d | 事件工作组 | 8h |
| 43 | 1.4.8 | 与供应商一起审阅详细信息 |  | 0.5d? | 2018-02-21 08:00 | 2018-02-21 12:00 | 42 | 35.1d | 0d | 事件领导组 | 4h |
| 44 | 1.4.9 | 安排供应商付款 |  | 0.5d? | 2018-02-21 13:00 | 2018-02-21 17:00 | 43 | 35.1d | 0d | 事件领导组 | 4h |
| 45 | 1.4.10 | 完成饮食招待 | milestone | 0d | 2018-02-21 17:00 | 2018-02-21 17:00 | 44 | 35.1d |  |  |  |
| 46 | 1.5 | **打印和通讯** |  | 19.5d? | 2018-02-12 13:00 | 2018-03-09 17:00 |  | 0d |  |  | 172h |
| 47 | 1.5.1 | 确定请柬样式 |  | 2d? | 2018-02-12 13:00 | 2018-02-14 12:00 | 14, 25, 34 | 0d |  | 事件领导组 | 16h |
| 48 | 1.5.2 | 发送保存日期消息(如果需要) |  | 0.5d? | 2018-02-14 13:00 | 2018-02-14 17:00 | 47 | 0d |  | 事件领导组 | 4h |
| 49 | 1.5.3 | 编写请柬消息 |  | 2d? | 2018-02-15 08:00 | 2018-02-16 17:00 | 48 | 0d |  | 创意人员 | 16h |
| 50 | 1.5.4 | 设计请柬 |  | 2d? | 2018-02-19 08:00 | 2018-02-20 17:00 | 49 | 0d |  | 创意人员 | 16h |
| 51 | 1.5.5 | 获取请柬批准 |  | 2d? | 2018-02-21 08:00 | 2018-02-22 17:00 | 50 | 0d |  | 营销领导组; 事件领导组 | 32h |
| 52 | 1.5.6 | 创建事件提醒副本 |  | 1d? | 2018-02-23 08:00 | 2018-02-23 17:00 | 51 | 0d |  | 创意人员 | 8h |
| 53 | 1.5.7 | 设计事件提醒 |  | 1d? | 2018-02-26 08:00 | 2018-02-26 17:00 | 52 | 0d |  | 创意人员 | 8h |
| 54 | 1.5.8 | 发送事件提醒 |  | 0.5d? | 2018-02-27 08:00 | 2018-02-27 12:00 | 53 | 0d |  | 事件工作组 | 4h |
| 55 | 1.5.9 | 材料副本创建日 |  | 2d? | 2018-02-27 13:00 | 2018-03-01 12:00 | 54 | 0d |  | 创意人员 | 16h |
| 56 | 1.5.10 | 材料设计日 |  | 2d? | 2018-03-01 13:00 | 2018-03-05 12:00 | 55 | 0d |  | 创意人员 | 16h |
| 57 | 1.5.11 | 材料打印日 |  | 3d? | 2018-03-05 13:00 | 2018-03-08 12:00 | 56 | 0d |  | 创意人员 | 24h |
| 58 | 1.5.12 | 材料组装日 |  | 0.5d? | 2018-03-08 13:00 | 2018-03-08 17:00 | 57 | 0d |  | 事件工作组 | 4h |
| 59 | 1.5.13 | 与供应商一起审阅 |  | 0.5d? | 2018-03-09 08:00 | 2018-03-09 12:00 | 58 | 0d |  | 事件领导组 | 4h |
| 60 | 1.5.14 | 安排供应商付款 |  | 0.5d? | 2018-03-09 13:00 | 2018-03-09 17:00 | 59, 54 | 0d |  | 事件领导组 | 4h |
| 61 | 1.5.15 | 完成打印和通讯 | milestone | 0d | 2018-03-09 17:00 | 2018-03-09 17:00 | 60 | 0d |  |  |  |

| ID | WBS | Task | Type | Duration | Start | Finish | Predecessors | Total slack | Free slack | Resources | Work |
| --- | --- | --- | --- | --- | --- | --- | --- | --- | --- | --- | --- |
| 62 | 1.6 | **注册/RSVP** |  | 15.5d? | 2018-03-12 08:00 | 2018-04-02 12:00 |  | 0d |  |  | 160h |
| 63 | 1.6.1 | 根据目标听众制作请柬列表 |  | 2d? | 2018-03-12 08:00 | 2018-03-13 17:00 | 61 | 0d |  | 事件工作组 | 16h |
| 64 | 1.6.2 | 购买直接邮件列表(如果适用) |  | 2d? | 2018-03-12 08:00 | 2018-03-13 17:00 | 61 | 0d |  | 事件工作组 | 16h |
| 65 | 1.6.3 | 发送请柬 |  | 1d? | 2018-03-14 08:00 | 2018-03-14 17:00 | 64, 63 | 0d |  | 事件工作组 | 8h |
| 66 | 1.6.4 | 收集 RSVP |  | 10d? | 2018-03-15 08:00 | 2018-03-28 17:00 | 63, 65 | 0d |  | 事件工作组 | 80h |
| 67 | 1.6.5 | 通知/发布 RSVP 列表(如果需要) |  | 0.5d? | 2018-03-29 08:00 | 2018-03-29 12:00 | 66 | 2d |  | 事件工作组 | 4h |
| 68 | 1.6.6 | 制作姓名标签 |  | 2d? | 2018-03-29 08:00 | 2018-03-30 17:00 | 66 | 0.5d |  | 事件工作组 | 16h |
| 69 | 1.6.7 | 制作座位表 |  | 0.5d? | 2018-03-29 08:00 | 2018-03-29 12:00 | 66 | 0d |  | 事件工作组 | 4h |
| 70 | 1.6.8 | 进行员工工作分配 |  | 1d? | 2018-03-29 13:00 | 2018-03-30 12:00 | 69 | 0d |  | 事件领导组 | 8h |
| 71 | 1.6.9 | 提供箱子 |  | 0.5d? | 2018-03-30 13:00 | 2018-03-30 17:00 | 70 | 0d |  | 事件工作组 | 4h |
| 72 | 1.6.10 | 请求并获取登记台志愿者 |  | 0.5d? | 2018-04-02 08:00 | 2018-04-02 12:00 | 71 | 0d |  | 事件工作组 | 4h |
| 73 | 1.6.11 | 完成注册/RSVP | milestone | 0d | 2018-04-02 12:00 | 2018-04-02 12:00 | 72, 67, 68 | 0d |  |  |  |
| 74 | 1.7 | **订购装饰品和音视频设备** |  | 6.5d? | 2018-02-09 08:00 | 2018-02-19 12:00 |  | 37.6d |  |  | 52h |
| 75 | 1.7.1 | 确定布置所需物品 |  | 2d? | 2018-02-09 08:00 | 2018-02-12 17:00 | 34 | 37.6d | 0d | 事件工作组 | 16h |
| 76 | 1.7.2 | 桌椅 |  | 1d? | 2018-02-13 08:00 | 2018-02-13 17:00 | 75 | 37.6d | 0d | 事件工作组 | 8h |
| 77 | 1.7.3 | 亚麻布 |  | 1d? | 2018-02-14 08:00 | 2018-02-14 17:00 | 76 | 37.6d | 0d | 事件工作组 | 8h |
| 78 | 1.7.4 | 中心装饰品 |  | 1d? | 2018-02-15 08:00 | 2018-02-15 17:00 | 77 | 37.6d | 0d | 事件工作组 | 8h |
| 79 | 1.7.5 | 音视频设备 |  | 1d? | 2018-02-16 08:00 | 2018-02-16 17:00 | 78 | 37.6d | 0d | 事件工作组 | 8h |
| 80 | 1.7.6 | 购买任何其他需要的设备 |  | 0.5d? | 2018-02-19 08:00 | 2018-02-19 12:00 | 79 | 37.6d | 0d | 事件工作组 | 4h |
| 81 | 1.7.7 | 完成装饰品/音视频设备 | milestone | 0d | 2018-02-19 12:00 | 2018-02-19 12:00 | 80, 34 | 37.6d |  |  |  |
| 82 | 1.8 | **PR/档案** |  | 8d? | 2018-02-12 13:00 | 2018-02-22 12:00 |  | 34.6d |  |  | 100h |
| 83 | 1.8.1 | 编写新闻稿 |  | 2d? | 2018-02-12 13:00 | 2018-02-14 12:00 | 14, 25, 34 | 34.6d | 0d | 营销领导组 | 16h |
| 84 | 1.8.2 | 审批新闻稿 |  | 2d? | 2018-02-14 13:00 | 2018-02-16 12:00 | 83 | 34.6d | 0d | 事件领导组; 营销交流 | 32h |
| 85 | 1.8.3 | 向各个群体和新闻媒体发送请柬 |  | 2d? | 2018-02-16 13:00 | 2018-02-20 12:00 | 84 | 34.6d | 0d | 事件工作组 | 16h |
| 86 | 1.8.4 | 制作事件“宣传语” |  | 2d? | 2018-02-20 13:00 | 2018-02-22 12:00 | 85 | 34.6d | 0d | 事件工作组 | 16h |
| 87 | 1.8.5 | 发送新闻稿 |  | 0.5d? | 2018-02-16 13:00 | 2018-02-16 17:00 | 84 | 36.1d | 0d | 营销交流 | 4h |
| 88 | 1.8.6 | 收集新闻剪辑 |  | 2d? | 2018-02-19 08:00 | 2018-02-20 17:00 | 87 | 36.1d | 1.5d | 事件工作组 | 16h |
| 89 | 1.8.7 | 完成 PR/归档 | milestone | 0d | 2018-02-22 12:00 | 2018-02-22 12:00 | 88, 86 | 34.6d |  |  |  |

Notes:
- 86: 您可以有特定的 PR 详细计划，以使组织根据该计划创作宣传语。

| ID | WBS | Task | Type | Duration | Start | Finish | Predecessors | Total slack | Free slack | Resources | Work |
| --- | --- | --- | --- | --- | --- | --- | --- | --- | --- | --- | --- |
| 90 | 1.9 | **计划赠品** |  | 7d? | 2018-01-30 13:00 | 2018-02-08 12:00 |  | 44.6d |  |  | 40h |
| 91 | 1.9.1 | 确定赠品 |  | 2d? | 2018-01-30 13:00 | 2018-02-01 12:00 | 14 | 44.6d | 0d | 事件领导组 | 16h |
| 92 | 1.9.2 | 确定行动动员 |  | 1d? | 2018-02-01 13:00 | 2018-02-02 12:00 | 91 | 44.6d | 0d | 事件领导组 | 8h |
| 93 | 1.9.3 | 确定赠品过程 |  | 1d? | 2018-02-02 13:00 | 2018-02-05 12:00 | 92 | 44.6d | 0d | 事件工作组 | 8h |
| 94 | 1.9.4 | 购买/订购赠品 |  | 2d? | 2018-02-05 13:00 | 2018-02-07 12:00 | 93 | 44.6d | 0d |  |  |
| 95 | 1.9.5 | 执行赠品 |  | 1d? | 2018-02-07 13:00 | 2018-02-08 12:00 | 94 | 44.6d | 0d | 事件工作组 | 8h |
| 96 | 1.9.6 | 完成赠品 | milestone | 0d | 2018-02-08 12:00 | 2018-02-08 12:00 | 95 | 44.6d |  |  |  |
| 97 | 1.10 | **运输事件材料** |  | 1d? | 2018-03-12 08:00 | 2018-03-12 17:00 |  | 14.5d |  |  | 12h |
| 98 | 1.10.1 | 运输说明 – 事件接收、存储、日期要求和运输 |  | 0.5d? | 2018-03-12 08:00 | 2018-03-12 12:00 | 61 | 14.5d | 0d | 事件工作组 | 4h |
| 99 | 1.10.2 | 运输材料 |  | 0.5d? | 2018-03-12 13:00 | 2018-03-12 17:00 | 98 | 14.5d | 0d | 事件工作组 | 4h |
| 100 | 1.10.3 | 运输必要的支持设备 |  | 0.5d? | 2018-03-12 13:00 | 2018-03-12 17:00 | 98 | 14.5d | 0d | 事件工作组 | 4h |
| 101 | 1.10.4 | 完成运输 | milestone | 0d | 2018-03-12 17:00 | 2018-03-12 17:00 | 99, 100 | 14.5d |  |  |  |
| 102 | 1.11 | **管理事件日** |  | 2.1d? | 2018-04-02 13:00 | 2018-04-04 13:48 |  | 0d |  |  | 8.8h |
| 103 | 1.11.1 | 检查设备 |  | 0.1d? | 2018-04-02 13:00 | 2018-04-02 13:48 | 101, 73 | 0d |  | 事件工作组 | 0.8h |
| 104 | 1.11.2 | 管理布置 |  | 0.1d? | 2018-04-02 13:48 | 2018-04-02 14:36 | 103 | 0d |  | 事件工作组 | 0.8h |
| 105 | 1.11.3 | 管理注册 |  | 0.1d? | 2018-04-02 14:36 | 2018-04-02 15:24 | 104 | 0d |  | 事件工作人员 | 0.8h |
| 106 | 1.11.4 | 管理供应商 |  | 0.1d? | 2018-04-02 15:24 | 2018-04-02 16:12 | 105 | 0d |  | 事件领导组 | 0.8h |
| 107 | 1.11.5 | 管理演讲者 |  | 0.1d? | 2018-04-02 16:12 | 2018-04-02 17:00 | 106 | 0d |  | 事件领导组 | 0.8h |
| 108 | 1.11.6 | 保持事件 |  | 1d? | 2018-04-03 08:00 | 2018-04-03 17:00 | 107 | 0d |  |  |  |
| 109 | 1.11.7 | 管理拆卸 |  | 0.1d? | 2018-04-04 08:00 | 2018-04-04 08:48 | 108 | 0d |  | 事件工作组 | 0.8h |
| 110 | 1.11.8 | 传送销售线索 |  | 0.5d? | 2018-04-04 08:48 | 2018-04-04 13:48 | 109 | 0d |  | 内部销售人员 | 4h |
| 111 | 1.11.9 | 完成事件日 | milestone | 0d | 2018-04-04 13:48 | 2018-04-04 13:48 | 110 | 0d |  |  |  |
| 112 | 1.12 | **评估事件成功** |  | 5.5d? | 2018-04-04 13:48 | 2018-04-12 08:48 |  | 0d |  |  | 100h |
| 113 | 1.12.1 | 管理和评估 |  | 2d? | 2018-04-04 13:48 | 2018-04-06 13:48 | 111 | 0d |  | 事件领导组 | 16h |
| 114 | 1.12.2 | 最终确定合同 |  | 2d? | 2018-04-06 13:48 | 2018-04-10 13:48 | 113 | 0d |  | 合同管理人员; 事件领导组 | 32h |
| 115 | 1.12.3 | 答谢辞 |  | 1d? | 2018-04-06 13:48 | 2018-04-09 13:48 | 113 | 2.5d |  | 事件工作组 | 8h |
| 116 | 1.12.4 | 听取演讲者事件汇报等 |  | 1d? | 2018-04-06 13:48 | 2018-04-09 13:48 | 113 | 1.5d |  | 事件领导组 | 8h |
| 117 | 1.12.5 | 听取事件工作组事件汇报 |  | 1d? | 2018-04-06 13:48 | 2018-04-09 13:48 | 113 | 1.5d |  | 事件领导组; 事件工作组 | 16h |
| 118 | 1.12.6 | 计算事件总预算 |  | 0.5d? | 2018-04-10 13:48 | 2018-04-11 08:48 | 113, 114 | 0d |  | 事件领导组 | 4h |
| 119 | 1.12.7 | 确定事件成功 |  | 1d? | 2018-04-11 08:48 | 2018-04-12 08:48 | 118, 116, 117 | 0d |  | 赞助商; 事件领导组 | 16h |
| 120 | 1.12.8 | 完成评估事件成功 | milestone | 0d | 2018-04-12 08:48 | 2018-04-12 08:48 | 119, 115 | 0d |  |  |  |
| 121 | 1.13 | 完成营销事件策划和执行项目 | milestone | 0d | 2018-04-12 08:48 | 2018-04-12 08:48 | 120 | 0d |  |  |  |
